# D gantt SAE

How a schedule from MS Project changed from version to version. A marks actual dates.

## Version 1 (saved 2019-11-19)

Note of the change: Diagrama de Gantt

| ID | WBS | Task | Duration | Start | Finish | Predecessors | Complete | Total float | Constraint |
| --- | --- | --- | --- | --- | --- | --- | --- | --- | --- |
| 1 | 1 | **Proyecto SAE** | 542.25d | 2019-02-09 A | 2021-01-14 |  | 24% |  |  |
| 2 |  | Inicio | 1d | 2019-02-09 | 2019-02-09 |  |  |  |  |
| 3 | 1.1 | **Analisis** | 49.01d | 2019-02-15 A | 2019-04-15 |  | 100% |  |  |
| 4 | 1.2.1 | **Levantamiento de información** | 7.88d | 2019-02-15 A | 2019-02-24 A |  | 100% |  |  |
| 5 |  | Cuestionario | 7.88d | 2019-02-15 A | 2019-02-24 A |  | 100% |  | finish no earlier than 2019-02-24 |
| 6 | 1.2.2 | **IEEE830** | 25.5d | 2019-03-02 A | 2019-03-31 A |  | 100% |  |  |
| 7 |  | Requerimientos funcionales y no funcionales | 13.75d | 2019-03-02 A | 2019-03-17 A |  | 100% |  | finish no earlier than 2019-03-17 |
| 8 |  | Ficha técnica del proyecto SAE | 7.88d | 2019-03-22 A | 2019-03-31 A |  | 100% |  | finish no earlier than 2019-03-31 |
| 9 |  | BPMN | 7.88d | 2019-04-05 A | 2019-04-14 A |  | 100% |  | finish no earlier than 2019-04-14 |
| 10 | 1.3 | **Diseño** | 179.25d | 2019-05-04 A | 2019-12-15 |  | 50% |  |  |
| 11 |  | Diagrama entidad relación | 13.75d | 2019-05-04 A | 2019-05-19 A |  | 100% |  | finish no earlier than 2019-05-19 |
| 12 |  | Diagrama de clases | 19.63d | 2019-05-24 A | 2019-06-16 A | 11 | 100% |  | finish no earlier than 2019-06-16 |
| 13 | 1.3.3 | **Diagrama de casos de uso** | 6.88d | 2019-06-22 | 2019-07-13 |  | 100% |  |  |
| 14 |  | Diagramas de caso de uso extendido | 6.88d | 2019-06-21 A | 2019-06-29 A |  | 100% |  | finish no earlier than 2019-06-29 |
| 15 |  | Diccionario de datos | 7.88d | 2019-07-19 A | 2019-07-28 A | 11 | 100% |  | finish no earlier than 2019-07-28 |
| 16 |  | Diagrama de distribución | 2d | 2019-07-27 A | 2019-07-28 A |  | 100% |  | finish no earlier than 2019-07-28 |
| 17 |  | Mockups | 7.88d | 2019-08-02 A | 2019-08-11 |  | 60% | 19.56d | finish no earlier than 2019-08-11 |
| 18 |  | Diseño de pagina web | 31.38d | 2019-08-16 A | 2019-09-22 | 17 | 50% | 368.88d | finish no earlier than 2019-09-22 |
| 19 |  | Bases de datos | 7.88d | 2019-09-27 | 2019-10-06 |  |  | 314d | finish no earlier than 2019-10-06 |
| 20 |  | Seguridad base de datos | 43.13d | 2019-10-25 | 2019-12-15 | 19 |  | 298.38d | finish no earlier than 2019-12-15 |
| 21 | 1.4 | **Implementación** | 119.5d | 2020-02-01 | 2020-06-21 |  |  | 178.88d |  |
| 22 |  | Implementación pagina web | 13.75d | 2020-02-01 | 2020-02-16 |  |  | 282.62d | finish no earlier than 2020-02-16 |
| 23 |  | Implementación base de datos | 25.5d | 2020-02-22 | 2020-03-22 |  |  | 253.25d | finish no earlier than 2020-03-22 |
| 24 |  | integrar base de datos a pagina web | 2d | 2020-03-28 | 2020-03-29 | 22, 23 |  | 249.38d | finish no earlier than 2020-03-29 |
| 25 |  | Pruebas | 31.38d | 2020-04-03 | 2020-05-10 |  |  | 186.62d | finish no earlier than 2020-05-10 |
| 26 |  | Funcionamiento pagina web | 13.75d | 2020-05-16 | 2020-05-31 | 25 |  | 182.75d | finish no earlier than 2020-05-31 |
| 27 |  | Funcionamiento del software | 13.75d | 2020-06-06 | 2020-06-21 | 26 |  | 178.88d | finish no earlier than 2020-06-21 |
| 28 | 1.5 | **Mantenimiento** | 178.88d | 2020-06-21 | 2021-01-21 |  |  | 0d |  |
| 29 |  | Actualización del sistema | 178.88d | 2020-06-21 | 2021-01-21 |  |  | 0d | finish no earlier than 2021-01-21 |
| 30 |  | fin | 0d | 2019-02-09 | 2019-02-09 |  |  |  |  |

## Version 2 (saved 2019-11-26)

Note of the change: Merge pull request #1 from Proyecto-SAE/Entregables-propuestos

Last finish stays 2021-01-21.

Changed:

| ID | Task | Other |
| --- | --- | --- |
| 9 | BPMN | resources Computador; Juan Gaviria → Computador (intel core i3 8GB RAM 1Tb); Juan Gaviria |
| 11 | Diagrama entidad relación | resources Computador; Alfredo Silva; Brayan Moscoso → Computador (intel core i3 8GB RAM 1Tb); Alfredo Silva; Brayan Moscoso |
| 12 | Diagrama de clases | resources Computador; Juan Gaviria; Uriel Astaiza → Computador (intel core i3 8GB RAM 1Tb); Juan Gaviria; Uriel Astaiza |
| 14 | Diagramas de caso de uso extendido | resources Computador; Alfredo Silva; Brayan Moscoso; Juan Gaviria; Uriel Astaiza → Computador (intel core i3 8GB RAM 1Tb); Alfredo Silva; Brayan Moscoso; Juan Gaviria; Uriel Astaiza |
| 15 | Diccionario de datos | resources Computador; Documentación; Internet [0.1%]; Uriel Astaiza → Computador (intel core i3 8GB RAM 1Tb); Documentación; Internet [0.1%]; Uriel Astaiza |
| 16 | Diagrama de distribución | resources Computador; Internet [0.1%]; Brayan Moscoso; Juan Gaviria → Computador (intel core i3 8GB RAM 1Tb); Internet [0.1%]; Brayan Moscoso; Juan Gaviria |
| 17 | Mockups | resources Computador; Balsamiq [0.1%]; Internet [0.1%]; Alfredo Silva; Brayan Moscoso; Juan Gaviria; Uriel Astaiza → Computador (intel core i3 8GB RAM 1Tb); Balsamiq [0.1%]; Internet [0.1%]; Alfredo Silva; Brayan Moscoso; Juan Gaviria; Uriel Astaiza |
| 18 | Diseño de pagina web | resources Balsamiq [0.1%]; Computador; Internet [0.1%]; Alfredo Silva; Brayan Moscoso; Juan Gaviria; Uriel Astaiza; Sublime text [0.1%] → Balsamiq [0.1%]; Computador (intel core i3 8GB RAM 1Tb); Internet [0.1%]; Alfredo Silva; Brayan Moscoso; Juan Gaviria; Uriel Astaiza; Sublime text [0.1%] |
| 19 | Bases de datos | resources Computador; Documentación; Brayan Moscoso; Uriel Astaiza; MySQl [0.1%] → Computador (intel core i3 8GB RAM 1Tb); Documentación; Brayan Moscoso; Uriel Astaiza; MySQl [0.1%] |
| 20 | Seguridad base de datos | resources Computador; Internet [0.1%]; Alfredo Silva; Juan Gaviria; Netbeans [0.1%] → Computador (intel core i3 8GB RAM 1Tb); Internet [0.1%]; Alfredo Silva; Juan Gaviria; Netbeans [0.1%] |
| 22 | Implementación pagina web | resources Computador; Internet [0.1%]; Alfredo Silva; Brayan Moscoso; Juan Gaviria; Uriel Astaiza; Sublime text [0.1%] → Computador (intel core i3 8GB RAM 1Tb); Internet [0.1%]; Alfredo Silva; Brayan Moscoso; Juan Gaviria; Uriel Astaiza; Sublime text [0.1%] |
| 23 | Implementación base de datos | resources Computador; Internet [0.1%]; Alfredo Silva; Brayan Moscoso; Juan Gaviria; Uriel Astaiza; MySQl [0.1%] → Computador (intel core i3 8GB RAM 1Tb); Internet [0.1%]; Alfredo Silva; Brayan Moscoso; Juan Gaviria; Uriel Astaiza; MySQl [0.1%] |
| 24 | integrar base de datos a pagina web | resources Computador; Alfredo Silva; Brayan Moscoso; Juan Gaviria; Uriel Astaiza; MySQl [0.1%]; Sublime text [0.1%] → Computador (intel core i3 8GB RAM 1Tb); Alfredo Silva; Brayan Moscoso; Juan Gaviria; Uriel Astaiza; MySQl [0.1%]; Sublime text [0.1%] |
| 25 | Pruebas | resources Computador; Internet [0.1%]; Alfredo Silva; Brayan Moscoso; Juan Gaviria; Uriel Astaiza → Computador (intel core i3 8GB RAM 1Tb); Internet [0.1%]; Alfredo Silva; Brayan Moscoso; Juan Gaviria; Uriel Astaiza |
| 26 | Funcionamiento pagina web | resources Computador; Internet [0.1%]; Alfredo Silva; Brayan Moscoso → Computador (intel core i3 8GB RAM 1Tb); Internet [0.1%]; Alfredo Silva; Brayan Moscoso |
| 27 | Funcionamiento del software | resources Computador; Internet [0.1%]; Juan Gaviria; Uriel Astaiza → Computador (intel core i3 8GB RAM 1Tb); Internet [0.1%]; Juan Gaviria; Uriel Astaiza |
| 29 | Actualización del sistema | resources Computador; Internet [0.1%]; Alfredo Silva; Brayan Moscoso; Juan Gaviria; Uriel Astaiza; MySQl [0.1%]; Netbeans [0.1%]; Sublime text [0.1%] → Computador (intel core i3 8GB RAM 1Tb); Internet [0.1%]; Alfredo Silva; Brayan Moscoso; Juan Gaviria; Uriel Astaiza; MySQl [0.1%]; Netbeans [0.1%]; Sublime text [0.1%] |
